How a schedule from an exported table changed from version to version. A marks actual dates.

## Version 1 (saved 2025-11-26)

Note of the change: Update solution-template with consolidated delivery structure

| Task | Start | Finish |
| --- | --- | --- |
| Project Kickoff | All stakeholders attended kickoff meeting; project charter approved | Project Manager |
| Requirements Gathering | [START_DATE+1] | [START_DATE+5] |
| Solution Architecture Design | [START_DATE+3] | [START_DATE+10] |
| Infrastructure Planning | [START_DATE+8] | [START_DATE+15] |
| Detailed Design | [START_DATE+15] | [START_DATE+25] |
| Security Design | [START_DATE+18] | [START_DATE+23] |
| Integration Design | [START_DATE+20] | [START_DATE+27] |
| Environment Setup | [START_DATE+25] | [START_DATE+32] |
| Core Development | [START_DATE+30] | [START_DATE+50] |
| Integration Development | [START_DATE+35] | [START_DATE+47] |
| Security Implementation | [START_DATE+38] | [START_DATE+48] |
| Unit Testing | [START_DATE+40] | [START_DATE+52] |
| Integration Testing | [START_DATE+50] | [START_DATE+60] |
| System Testing | [START_DATE+55] | [START_DATE+70] |
| Security Testing | [START_DATE+60] | [START_DATE+67] |
| User Acceptance Testing | [START_DATE+70] | [START_DATE+80] |
| Production Environment Setup | [START_DATE+75] | [START_DATE+82] |
| Pre-Deployment Testing | [START_DATE+80] | [START_DATE+85] |
| Production Deployment | [START_DATE+85] | [START_DATE+87] |
| User Training Delivery | [START_DATE+75] | [START_DATE+90] |
| Go-Live Support | [START_DATE+89] | [START_DATE+96] |
| Hypercare Period | [START_DATE+96] | [START_DATE+126] |
| Project Documentation | [START_DATE+90] | [START_DATE+100] |
| Project Closure | Hypercare complete; project formally closed with lessons learned | Project Manager |
| 25 | 77 | 28 |
| left | left | left |
| Milestone Name | Success Criteria | Owner |
| Requirements Approved | Requirements document signed off by business stakeholders | Business Analyst |
| Architecture Approved | Architecture design approved by technical governance board | Solution Architect |
| Design Complete | All detailed design documents completed and approved | Technical Lead |
| Development Complete | All development completed; unit tests passing with 80%+ coverage | Development Team Lead |
| Testing Complete | All test phases completed; no critical/high defects open | QA Lead |
| Go-Live | Solution deployed to production; validation complete | Project Manager |
| 8 | 8 | 8 |
| center | center | center |
| PM | BA | TL |
| A | I | C |
| 19 | 45 | 19 |
| Frequency | Purpose | Owner |
| Once | Launch project and align on objectives | Project Manager |
| Bi-weekly | Sprint demo and feedback | Technical Lead |
| Weekly | Test progress and quality metrics | QA Lead |
| Daily (2 weeks pre) | Go-live preparation and checklist | Project Manager |

## Version 2 (saved 2025-11-27)

Note of the change: Update Excel docs with template field mapping and RACI improvements

Added:

| Task | Start | Finish |
| --- | --- | --- |
| 10 | 10 | 10 |

Removed: 8
